# Main Assessment Model ERS Nov 2014.mpp

Schedule from MS Project, 2020-10-12 to 2021-03-31, 7 hours a day, costs in £, A marks actual dates.

## Calendars

- Working calendar B.N.: Mon-Fri 08:30-12:00, 13:00-16:30; Sat-Sun off.

## Resources

| Resource | Group | Rate |
| --- | --- | --- |
| Andrew Coburn | Web Designer | 40 |
| Autumn Lark | Web Developer | 45 |
| Aimee Laing | Web Developer | 45 |
| James Lee | Web Designer | 40 |
| Hannah McCarvill | Web Administrator | 40 |
| Blazej Niezabitowski | Project Planner | 35 |
| Yangyang Yin | Project Planner | 35 |

## Schedule

| ID | WBS | Task | Type | Duration | Start | Finish | Predecessors | Complete | Remaining | Actual start | Baseline start | Baseline finish | Baseline duration | Total slack | Free slack | Constraint | Resources | Work | Actual work | Cost | Baseline cost | Actual cost |
| --- | --- | --- | --- | --- | --- | --- | --- | --- | --- | --- | --- | --- | --- | --- | --- | --- | --- | --- | --- | --- | --- | --- |
| 1 | 1 | **Stage 1** |  | 34d? | 2020-10-12 | 2020-11-26 |  | 99% | 0d? | 2020-10-16 | 2017-10-30 | 2018-02-23 | 69.71d |  |  |  |  | 1547h | 1547h | 61,740 | 18,440 | 61,740 |
| 2 | 1.1 | Project costing |  | 7d? | 2020-10-16 A | 2020-10-26 A |  | 100% |  |  |  |  |  |  |  | finish no earlier than 2020-10-26 | Aimee Laing | 49h | 49h | 2,205 |  | 2,205 |
| 3 | 1.2 | Project plan creation |  | 11d? | 2020-10-16 A | 2020-10-30 A |  | 100% |  |  |  |  |  |  |  | finish no earlier than 2020-10-30 | Autumn Lark; Blazej Niezabitowski; Yangyang Yin | 231h | 231h | 8,855 |  | 8,855 |
| 4 | 1.3 | Assessment of risks |  | 6d? | 2020-10-16 A | 2020-10-23 A |  | 100% |  |  |  |  |  |  |  | finish no earlier than 2020-10-23 | Hannah McCarvill | 42h | 42h | 1,680 |  | 1,680 |
| 5 | 1.4 | Analyse requirements |  | 11d? | 2020-10-16 A | 2020-10-30 A |  | 100% |  |  |  |  |  |  |  | finish no earlier than 2020-10-30 | Aimee Laing; Andrew Coburn; Autumn Lark; Blazej Niezabitowski; Hannah McCarvill; James Lee; Yangyang Yin | 539h | 539h | 21,560 |  | 21,560 |
| 6 | 1.5 | Prepare storyboard for web pages |  | 11d | 2020-10-23 A | 2020-11-06 A |  | 100% |  |  |  |  |  |  |  | start no earlier than 2020-10-23 |  |  |  |  |  |  |
| 7 | 1.6 | Establish navigation map |  | 11d | 2020-10-23 A | 2020-11-06 A |  | 100% |  |  |  |  |  |  |  | start no earlier than 2020-10-23 |  |  |  |  |  |  |
| 8 | 1.7 | Usability Evaluation Document |  | 11d | 2020-10-30 A | 2020-11-13 A |  | 100% |  |  |  |  |  |  |  | start no earlier than 2020-10-23 |  |  |  |  |  |  |
| 9 | 1.8 | First Report Draft |  | 14d | 2020-11-09 A | 2020-11-26 A | 2, 3, 4, 6, 8, 5 | 100% |  |  |  |  |  |  |  | start no earlier than 2020-11-09 | Aimee Laing; Andrew Coburn; Autumn Lark; Blazej Niezabitowski; Hannah McCarvill; James Lee; Yangyang Yin | 686h | 686h | 27,440 |  | 27,440 |
| 10 | 1.9 | Stage 1 Milestone | milestone | 0d | 2020-11-26 | 2020-11-26 | 9 |  |  |  | 2018-02-23 | 2018-02-23 | 0d | 89d |  | finish no earlier than 2020-11-26 |  |  |  |  |  |  |
| 11 | 2 | **Stage 2** |  | 45d? | 2020-12-04 | 2021-02-04 | 1 |  |  |  | 2018-02-23 | 2018-10-05 | 126.43d |  |  |  |  |  |  |  | 41,960 |  |
| 12 | 2.1 | Collect design documents |  | 6d | 2020-12-04 | 2020-12-11 |  |  |  |  |  |  |  | 3d | 0d |  |  |  |  |  |  |  |
| 13 | 2.2 | Create front end prototype |  | 14d | 2020-12-14 | 2020-12-31 | 12 |  |  |  |  |  |  | 3d | 0d |  |  |  |  |  |  |  |
| 14 | 2.3 | Develop website to meet design spec |  | 28d | 2020-12-14 | 2021-01-20 | 13SS |  |  |  |  |  |  | 3d | 0d |  |  |  |  |  |  |  |
| 15 | 2.4 | Prepare test strategy and test website |  | 7d | 2021-01-21 | 2021-01-29 | 14 |  |  |  |  |  |  | 3d | 0d |  |  |  |  |  |  |  |
| 16 | 2.5 | Collate a list of errors/defects |  | 4d | 2021-02-01 | 2021-02-04 | 15 |  |  |  |  |  |  | 3d | 0d |  |  |  |  |  |  |  |
| 17 | 2.6 | Give evidence of testing |  | 4d | 2021-02-01 | 2021-02-04 | 16SS |  |  |  |  |  |  | 3d | 0d |  |  |  |  |  |  |  |
| 18 | 2.7 | Stage 2 Milestone | milestone | 0d | 2021-02-04 | 2021-02-04 | 17 |  |  |  | 2018-10-05 | 2018-10-05 | 0d | 3d |  |  |  |  |  |  |  |  |
| 19 | 3 | **Stage 3** |  | 40d? | 2021-02-04 | 2021-03-31 | 11 |  |  |  | 2018-10-05 | 2018-11-09 | 20.57d |  |  |  |  |  |  |  | 11,480 |  |
| 20 | 3.1 | Develop remainder of website |  | 28d | 2021-02-04 | 2021-03-15 |  |  |  |  |  |  |  | 4d | 3d |  |  |  |  |  |  |  |
| 21 | 3.2 | Establish criteria to evaluate project |  | 7d | 2021-02-11 | 2021-02-19 | 20SS |  |  |  |  |  |  | 9d | 0d | start no earlier than 2021-02-11 |  |  |  |  |  |  |
| 22 | 3.3 | Gather evidence to support the evaluation |  | 7d | 2021-02-22 | 2021-03-02 | 21 |  |  |  |  |  |  | 9d | 8d |  |  |  |  |  |  |  |
| 23 | 3.4 | Document modifications |  | 4d | 2021-03-15 | 2021-03-18 | 22 |  |  |  |  |  |  | 1d | 0d | start no earlier than 2021-03-15 |  |  |  |  |  |  |
| 24 | 3.5 | Usability Evaluation |  | 7d | 2021-03-19 | 2021-03-29 | 20, 23 |  |  |  |  |  |  | 1d | 0d | start no earlier than 2021-03-15 |  |  |  |  |  |  |
| 25 | 3.6 | Project evaluation |  | 7d | 2021-03-19 | 2021-03-29 | 24SS |  |  |  |  |  |  | 1d | 0d | start no earlier than 2021-03-19 |  |  |  |  |  |  |
| 26 | 3.7 | Product demonstration |  | 1d | 2021-03-30 | 2021-03-30 | 25 |  |  |  |  |  |  | 1d | 0d |  |  |  |  |  |  |  |
| 27 | 3.8 | Stage 3 Milestone | milestone | 0d | 2021-03-30 | 2021-03-30 | 26 |  |  |  | 2018-11-09 | 2018-11-09 | 0d | 1d |  |  |  |  |  |  |  |  |
